# Practica2

Schedule from MS Project, 2017-02-20 to 2018-02-15, costs in €.

## Calendars

- Copia de Estándar: Mon-Fri 09:00-13:00, 15:00-19:00; Sat-Sun off. Exceptions (off unless hours are given): 2017-02-28 to 2020-02-28 (Día de Andalucía, recurring), 2017-04-13 (Jueves Santo '17), 2017-04-14 (Viernes Santo '17), 2017-05-01 to 2020-05-01 (Día del Trabajo, recurring), 2017-08-15 to 2020-08-15 (Asunción de la Virgen, recurring), 2017-08-19 to 2020-08-19 (Toma de Málaga por los Reyes Católicos, recurring), 2017-09-08 to 2020-09-08 (Virgen de la Victoria, recurring), 2017-10-12 to 2020-10-12 (Fiesta Nacional Española, recurring), 2017-11-01 to 2020-11-01 (Día de Todos los Santos, recurring), 2017-12-06 to 2020-12-06 (Día de la Constitución Española, recurring), 2017-12-08 to 2020-12-08 (Inmaculada Concepción, recurring), 2017-12-25 to 2020-12-25 (Natividad del Señor, recurring).

## Resources

| Resource | Rate |
| --- | --- |
| DIRECTOR PROYECTO | 60 |
| INGENIERO AGRONOMO | 48 |
| EXPERTO GIS | 47 |
| ECONOMISTA | 45 |
| SOCIOLOGO | 45 |
| INGENIERO EN MEDIOAMBIENTE | 45 |
| ADMINISTRATIVO | 30 |
| TECNICOS DE APOYO | 35 |

## Schedule

| ID | WBS | Task | Type | Duration | Start | Finish | Predecessors | Resources | Work | Cost |
| --- | --- | --- | --- | --- | --- | --- | --- | --- | --- | --- |
| 1 | 1 | **Total Proyecto** |  | 247d | 2017-02-20 | 2018-02-15 |  |  | 7543.6h | 340,223.6 |
| 2 | 1.1 | **FASE 1: PREPARACION PARA LA FORMULACION** |  | 36d | 2017-02-20 | 2017-04-11 |  |  | 628.4h | 29,492.4 |
| 3 | 1.1.1 | INICIO | milestone, manual | 0d | 2017-02-20 | 2017-02-20 |  | DIRECTOR PROYECTO |  |  |
| 4 | 1.1.2 | TERMINOS DE REFERENCIA. Objetivos. Condicionantes del Promotor | manual | 10d | 2017-02-20 | 2017-03-06 | 3 | DIRECTOR PROYECTO [50%]; ECONOMISTA [25%]; INGENIERO EN MEDIOAMBIENTE [25%]; INGENIERO AGRONOMO [25%] | 110h | 5,676 |
| 5 | 1.1.3 | FINANCIACION | manual | 7d | 2017-02-20 | 2017-02-28 | 3 | DIRECTOR PROYECTO [15%]; ECONOMISTA [20%]; SOCIOLOGO [25%]; INGENIERO AGRONOMO [25%] | 47.6h | 2,310 |
| 6 | 1.1.4 | COMITÉ DE COORDINACION. Constitución y organización | manual | 5d | 2017-02-20 | 2017-02-24 | 3 | DIRECTOR PROYECTO [25%] | 10h | 600 |
| 7 | 1.1.5 | EQUIPO DE FORMULACION. Recursos humanos y técnicos | manual | 15d | 2017-02-27 | 2017-03-20 | 4SS, 6 | DIRECTOR PROYECTO [25%]; ECONOMISTA [20%]; SOCIOLOGO [10%]; INGENIERO EN MEDIOAMBIENTE [10%]; INGENIERO AGRONOMO [10%]; ADMINISTRATIVO [10%] | 108.8h | 5,222.4 |
| 8 | 1.1.6 | METODOLOGIA Y PLAN DE TRABAJO | manual | 10d | 2017-03-21 | 2017-04-03 | 7, 5, 4, 6SS | INGENIERO AGRONOMO [50%]; DIRECTOR PROYECTO [50%]; ECONOMISTA [10%]; INGENIERO EN MEDIOAMBIENTE [50%]; ADMINISTRATIVO [50%]; SOCIOLOGO [50%] | 208h | 9,480 |
| 9 | 1.1.7 | DOC. Nº1: Fin P.F | manual | 5d | 2017-04-04 | 2017-04-10 | 8 | DIRECTOR PROYECTO [50%]; ECONOMISTA [50%]; SOCIOLOGO [20%]; INGENIERO EN MEDIOAMBIENTE [20%]; INGENIERO AGRONOMO [20%]; ADMINISTRATIVO | 104h | 4,404 |
| 10 | 1.1.8 | Entrega al PROMOTOR. Doc. nº1 | milestone, manual | 0d | 2017-04-11 | 2017-04-11 | 9 | DIRECTOR PROYECTO [50%] |  |  |
| 11 | 1.1.9 | SEMINARIO DE LANZAMIENTO DEL PROYECTO | manual | 1d | 2017-04-11 | 2017-04-11 | 10 | DIRECTOR PROYECTO; ECONOMISTA; SOCIOLOGO; INGENIERO EN MEDIOAMBIENTE; ADMINISTRATIVO | 40h | 1,800 |
| 12 | 1.2 | **FASE 2: ANALISIS Y DIAGNOSTICO** |  | 94d | 2017-04-12 | 2017-08-25 |  |  | 4173.6h | 189,215.2 |
| 13 | 1.2.1 | **ANALISIS ANTECEDENTES** |  | 15d | 2017-04-12 | 2017-05-05 | 11 |  | 381.6h | 17,078.4 |
| 14 | 1.2.1.1 | POLITICAS Y PROGRAMAS | manual | 10d | 2017-04-12 | 2017-04-27 | 11 | DIRECTOR PROYECTO [20%]; INGENIERO AGRONOMO [50%]; ECONOMISTA [40%]; ADMINISTRATIVO [20%]; INGENIERO EN MEDIOAMBIENTE [20%] | 144h | 6,624 |
| 15 | 1.2.1.2 | MARCO LEGAL | manual | 15d | 2017-04-12 | 2017-05-05 | 11 | DIRECTOR PROYECTO [20%]; INGENIERO AGRONOMO [20%]; ADMINISTRATIVO [50%]; ECONOMISTA [40%] | 187.2h | 7,862.4 |
| 16 | 1.2.1.3 | BASES DE DATOS EXISTENTES | manual | 7d | 2017-04-12 | 2017-04-24 | 11 | DIRECTOR PROYECTO [20%]; INGENIERO AGRONOMO [50%] | 50.4h | 2,592 |
| 17 | 1.2.2 | **ANALISIS DEL AREA DEL PROYECTO** |  | 80d | 2017-04-13 | 2017-08-04 | 11, 16 |  | 2233.2h | 99,184 |
| 18 | 1.2.2.1 | ANALISIS DE RECURSOS NATURALES. INVENTARIO AMBIENTAL | manual | 35d | 2017-02-20 | 2017-04-10 |  | INGENIERO EN MEDIOAMBIENTE; INGENIERO AGRONOMO [50%]; ECONOMISTA [40%]; ADMINISTRATIVO [20%]; EXPERTO GIS [50%] | 748.8h | 33,552 |
| 19 | 1.2.2.2 | INFRAESTRUCTURAS Y SERVICIOS | manual | 20d | 2017-04-10 | 2017-05-10 | 18 | DIRECTOR PROYECTO [10%]; ADMINISTRATIVO [25%]; INGENIERO AGRONOMO; SOCIOLOGO [50%] | 340.4h | 15,456 |
| 20 | 1.2.2.3 | ANALISIS DE SECTORES PRODUCTIVOS | manual | 25d | 2017-05-11 | 2017-06-14 | 14, 13, 15, 19 | DIRECTOR PROYECTO [20%]; ECONOMISTA; INGENIERO AGRONOMO [50%]; ADMINISTRATIVO [50%] | 440h | 19,200 |
| 21 | 1.2.2.4 | ANALISIS POBLACIONAL | manual | 20d | 2017-04-13 | 2017-05-12 |  | INGENIERO AGRONOMO [25%]; ADMINISTRATIVO [25%]; SOCIOLOGO | 264h | 11,352 |
| 22 | 1.2.2.5 | SISTEMA GENERAL TERRITORIAL DE INFORMACION | manual | 21d | 2017-04-25 | 2017-05-24 | 16 | INGENIERO AGRONOMO [25%]; ADMINISTRATIVO [25%]; EXPERTO GIS; SOCIOLOGO | 440h | 19,624 |
| 23 | 1.2.3 | **ANALISIS DE AGENTES Y PARTICIPACION** |  | 82d | 2017-05-03 | 2017-08-25 |  |  | 1539.2h | 72,124.8 |
| 24 | 1.2.3.1 | IDENTIFICACIÓN DE AGENTES Y TIPOLOGIA | manual | 10d | 2017-05-03 | 2017-05-16 | 22SS+5d | DIRECTOR PROYECTO [50%]; INGENIERO AGRONOMO [50%]; ADMINISTRATIVO [25%]; SOCIOLOGO | 180h | 8,520 |
| 25 | 1.2.3.2 | ANALISIS DE LA PARTICIPACIÓN: ENCUESTA CON LOS AGENTES | manual | 60d | 2017-05-17 | 2017-08-08 | 24 | DIRECTOR PROYECTO [50%]; INGENIERO AGRONOMO [50%]; ADMINISTRATIVO [25%]; SOCIOLOGO | 1080h | 51,120 |
| 26 | 1.2.3.3 | TALLER DE PARTICIPACIÓN AGENTES PUBLICOS | manual | 1d | 2017-05-31 | 2017-05-31 | 25SS+10d | INGENIERO AGRONOMO [50%]; ADMINISTRATIVO [50%]; DIRECTOR PROYECTO [15%]; SOCIOLOGO | 17.2h | 744 |
| 27 | 1.2.3.4 | ANALISIS PROSPECTIVO "SIN" | manual | 6d | 2017-06-01 | 2017-06-08 | 26 | INGENIERO AGRONOMO [25%]; ECONOMISTA [50%]; SOCIOLOGO [25%]; INGENIERO EN MEDIOAMBIENTE [25%]; DIRECTOR PROYECTO [15%] | 67.2h | 3,168 |
| 28 | 1.2.3.5 | INFORME DE PARTICIPACION: Problemas, necesidades, oportunidades | manual | 10d | 2017-08-09 | 2017-08-23 | 27, 25 | DIRECTOR PROYECTO [30%]; INGENIERO AGRONOMO [25%]; ECONOMISTA [50%]; SOCIOLOGO [25%]; INGENIERO EN MEDIOAMBIENTE [25%]; ADMINISTRATIVO [50%] | 180.4h | 7,920 |
| 29 | 1.2.3.6 | PRESENTACIÓN Y VALIDACION DE CONCLUSIONES | manual | 2d | 2017-08-24 | 2017-08-25 | 28 | DIRECTOR PROYECTO [25%]; INGENIERO AGRONOMO [10%]; ECONOMISTA [20%]; SOCIOLOGO [10%]; ADMINISTRATIVO [25%] | 14.4h | 652.8 |
| 30 | 1.2.4 | CONCLUSIONES Y Doc. Nº2. Presentación al PROMOTOR | manual | 1d | 2017-08-25 | 2017-08-25 | 29 | DIRECTOR PROYECTO [50%]; INGENIERO AGRONOMO [25%]; ADMINISTRATIVO; ECONOMISTA [50%]; INGENIERO EN MEDIOAMBIENTE [20%] | 19.6h | 828 |
| 31 | 1.2.5 | Doc. nº2. REVISIÓN POR EL PROMOTOR | milestone, manual | 0d | 2017-08-25 | 2017-08-25 | 29, 30 |  |  |  |

| ID | WBS | Task | Type | Duration | Start | Finish | Predecessors | Total slack | Resources | Work | Cost |
| --- | --- | --- | --- | --- | --- | --- | --- | --- | --- | --- | --- |
| 32 | 1.3 | **FASE 3: DISEÑO DEL PROYECTO** |  | 92d | 2017-08-28 | 2018-01-10 |  | 0d |  | 1236h | 57,396 |
| 33 | 1.3.1 | OBJETIVOS Y METAS | manual | 1d | 2017-08-28 | 2017-08-28 | 31 |  | DIRECTOR PROYECTO; INGENIERO AGRONOMO [50%] | 12h | 672 |
| 34 | 1.3.2 | ALTERNATIVA ESTRATEGICAS: ANÁLISIS Y SELECCIÓN | manual | 7d | 2017-08-29 | 2017-09-06 | 33 |  | DIRECTOR PROYECTO [50%]; INGENIERO AGRONOMO; ECONOMISTA; INGENIERO EN MEDIOAMBIENTE [50%] | 168h | 8,148 |
| 35 | 1.3.3 | FORMULACION DE LOS COMPONENTES | manual | 60d | 2017-09-07 | 2017-12-04 | 34 |  | INGENIERO AGRONOMO [50%]; ECONOMISTA [50%]; INGENIERO EN MEDIOAMBIENTE [50%] | 756h | 34,776 |
| 36 | 1.3.4 | DISEÑO DE LA ORGANIZACIÓN | manual | 10d | 2017-12-05 | 2017-12-20 | 35 |  | INGENIERO AGRONOMO [50%]; ECONOMISTA [50%]; INGENIERO EN MEDIOAMBIENTE [50%] | 144h | 6,624 |
| 37 | 1.3.5 | SISTEMA DE SEGUIMIENTO Y EVALUACION. Programación de la ejecución | manual | 7d | 2017-12-21 | 2018-01-01 | 36, 35 |  | INGENIERO AGRONOMO [50%]; ECONOMISTA [50%]; INGENIERO EN MEDIOAMBIENTE [50%] | 96h | 4,416 |
| 38 | 1.3.6 | PRESUPUESTACION | manual | 4d | 2017-12-21 | 2017-12-27 | 35, 36 |  | INGENIERO AGRONOMO [50%]; ECONOMISTA [50%]; INGENIERO EN MEDIOAMBIENTE [50%] | 60h | 2,760 |
| 39 | 1.3.7 | Doc. Nº 3. Entrega al PROMOTOR | milestone, manual | 0d | 2017-12-28 | 2017-12-28 | 38 |  | DIRECTOR PROYECTO |  |  |
| 40 | 1.3.8 | Doc. Nº 3. REVISION POR EL PROMOTOR | manual | 10d | 2017-12-28 | 2018-01-10 | 39 |  |  |  |  |
| 41 | 1.4 | **FASE 4: EVALUACION MULTICRITERIO** |  | 15d | 2018-01-11 | 2018-01-31 |  | 0d |  | 596h | 27,700 |
| 42 | 1.4.1 | EVALUACION ECONOMICO-FINANCIERA | manual | 10d | 2018-01-11 | 2018-01-24 | 40 |  | DIRECTOR PROYECTO [25%]; INGENIERO AGRONOMO [50%]; ECONOMISTA | 140h | 6,720 |
| 43 | 1.4.2 | EVALUACION SOCIAL Y CULTURAL | manual | 10d | 2018-01-11 | 2018-01-24 | 40 |  | DIRECTOR PROYECTO [25%]; INGENIERO AGRONOMO [50%]; ECONOMISTA [15%]; SOCIOLOGO | 152h | 7,260 |
| 44 | 1.4.3 | EVALUACION AMBIENTAL | manual | 10d | 2018-01-11 | 2018-01-24 | 40 |  | DIRECTOR PROYECTO [25%]; INGENIERO AGRONOMO [50%]; ECONOMISTA [15%]; INGENIERO EN MEDIOAMBIENTE | 152h | 7,260 |
| 45 | 1.4.4 | EVALUACION DE RIESGOS, SEGURIDAD Y SALUD DEL PROYECTO | manual | 10d | 2018-01-11 | 2018-01-24 | 40 |  | DIRECTOR PROYECTO [25%]; INGENIERO AGRONOMO [50%]; ECONOMISTA [15%]; TECNICOS DE APOYO | 152h | 6,460 |
| 46 | 1.4.5 | Entrega Doc. nº 4. VIABILIDAD Y SOSTENIBLIDAD | milestone, manual | 0d | 2018-01-25 | 2018-01-25 | 45 |  |  |  |  |
| 47 | 1.4.6 | Revisión Doc. nº 4 | manual | 5d | 2018-01-25 | 2018-01-31 | 42, 43, 44 |  |  |  |  |
| 48 | 1.5 | **FASE 5: DOCUMENTACION** |  | 10d | 2018-02-01 | 2018-02-15 |  | 0d |  | 909.6h | 36,420 |
| 49 | 1.5.1 | MEMORIA | manual | 6d | 2018-02-01 | 2018-02-08 | 47 |  | INGENIERO AGRONOMO [50%]; ECONOMISTA [25%]; DIRECTOR PROYECTO [10%]; TECNICOS DE APOYO | 88.8h | 3,660 |
| 50 | 1.5.2 | ANEJOS A LA MEMORIA | manual | 10d | 2018-02-01 | 2018-02-14 | 47 |  | INGENIERO AGRONOMO [50%]; ECONOMISTA [25%]; DIRECTOR PROYECTO [10%]; INGENIERO EN MEDIOAMBIENTE [50%]; ADMINISTRATIVO [50%]; TECNICOS DE APOYO | 228h | 9,100 |
| 51 | 1.5.3 | PLANOS | manual | 10d | 2018-02-01 | 2018-02-14 | 47 |  | INGENIERO AGRONOMO [50%]; ECONOMISTA [25%]; DIRECTOR PROYECTO [10%]; INGENIERO EN MEDIOAMBIENTE [50%]; ADMINISTRATIVO [50%]; TECNICOS DE APOYO | 228h | 9,100 |
| 52 | 1.5.4 | PLIEGO DE CONDICIONES | manual | 3d | 2018-02-01 | 2018-02-05 | 47 |  | INGENIERO AGRONOMO [50%]; ECONOMISTA [25%]; DIRECTOR PROYECTO [10%]; INGENIERO EN MEDIOAMBIENTE [50%]; ADMINISTRATIVO [50%]; TECNICOS DE APOYO | 68.4h | 2,730 |
| 53 | 1.5.5 | PRESUPUESTO | manual | 3d | 2018-02-01 | 2018-02-05 | 47 |  | ECONOMISTA [25%]; INGENIERO AGRONOMO [50%]; DIRECTOR PROYECTO [10%]; INGENIERO EN MEDIOAMBIENTE [50%]; ADMINISTRATIVO [50%]; TECNICOS DE APOYO | 68.4h | 2,730 |
| 54 | 1.5.6 | ESTUDIO DE SEGURIDAD Y SALUD | manual | 10d | 2018-02-01 | 2018-02-14 | 47 |  | INGENIERO AGRONOMO [50%]; ECONOMISTA [25%]; DIRECTOR PROYECTO [10%]; INGENIERO EN MEDIOAMBIENTE [50%]; ADMINISTRATIVO [50%]; TECNICOS DE APOYO | 228h | 9,100 |
| 55 | 1.5.7 | Entrega del proyecto | milestone, manual | 0d | 2018-02-15 | 2018-02-15 | 54, 49, 50, 51, 52, 53 |  |  |  |  |
